Schedule from OmniPlan.
Project start 2017-09-11

## Resources

| Resource | Group |
| --- | --- |
| Resource 1 | staff |
| Equipment 1 | equipment |
| Material 1 | material |
| Group 1 | group |
| Milko Skofic | staff |

## Schedule

| ID | WBS | Task | Predecessors | Complete | Constraint | Resources | Work | Actual work |
| --- | --- | --- | --- | --- | --- | --- | --- | --- |
| 1 | 1 | Workflow analysis |  | 100% | start no earlier than 2017-09-04 | Milko Skofic | 32h | 32h |
| 2 | 2 | Data dictionary workflow analysis | 1 | 100% |  | Milko Skofic | 32h | 32h |
| 3 | 3 | Data dictionary components analysis | 2 | 100% |  | Milko Skofic | 32h | 32h |
| 4 | 4 | **Build a conceptual prototype of the data dictionary components** | 3 |  |  |  |  |  |
| 5 | 4.1 | Build the term model |  | 100% |  | Milko Skofic | 16h | 16h |
| 6 | 4.2 | Build the descriptor model | 5 | 100% |  | Milko Skofic | 16h | 16h |
| 7 | 4.3 | Build the relationships model | 6 | 100% |  | Milko Skofic | 24h | 24h |
| 8 | 5 | Test conceptual model | 7 | 100% |  | Milko Skofic | 24h | 24h |
| 9 | 6 | **Atomic operations census** |  |  |  |  |  |  |
| 10 | 6.1 | Census of all required atomic operations | 8 | 100% |  | Milko Skofic | 24h | 24h |
| 11 | 6.2 | Census of all required descriptors for low level operations | 10 | 100% |  | Milko Skofic | 24h | 24h |
| 12 | 6.3 | Census of all required classes for low level operations | 11 | 100% |  | Milko Skofic | 16h | 16h |
| 13 | 6.4 | Determine new collection requirements | 12 | 100% |  | Milko Skofic | 16h | 16h |
| 14 | 7 | **Data standards** | 13 |  |  |  |  |  |
| 15 | 7.1 | Compilation of data standards. |  | 100% |  | Milko Skofic | 24h | 24h |
| 16 | 7.2 | Update census of required descriptors from data standards.. | 15 | 100% |  | Milko Skofic | 16h | 16h |
| 17 | 7.3 | Update census of required classes from data standards. | 16 | 100% |  | Milko Skofic | 8h | 8h |
| 18 | 7.4 | Determine new collection requirements. | 17 | 100% |  | Milko Skofic | 8h | 8h |
| 19 | 8 | Compile the base data dictionary | 18 | 100% |  | Milko Skofic | 24h | 24h |
| 20 | 9 | Load data dictionary components in database | 19 | 100% |  | Milko Skofic | 16h | 16h |
| 21 | 10 | **Test data dictionary components** | 20 |  |  |  |  |  |
| 22 | 10.1 | Apply use cases |  | 100% |  | Milko Skofic | 24h | 24h |
| 23 | 10.2 | Test enumerations functionality | 22 | 100% |  | Milko Skofic | 24h | 24h |
| 24 | 10.3 | Test classes and structures | 23 | 100% |  | Milko Skofic | 16h | 16h |
| 25 | 10.4 | Test forms structures | 24 | 100% |  | Milko Skofic | 8h | 8h |

Notes:
- 1: Breakdown of the main actions needed starting from the registration of a survey into the system, until the obtention of a cleaned dataset in the aggregated data store.
- 2: Determine the general structure and workflow governing in the data dictionary. / Graph structure: determine the distinct predicates and the graph structure needed to represent controlled vocabularies, structures, forms and other types of relationships.
- 3: Determine which components are needed to implement the data dictionary. / Test a series of use-cases and collect the necessary elements needed to express all aspects of descriptor data types, definitions and implementation as database keys.
- 4: Determine the components and rules governing the data dictionary.
- 5: Determine the rules and structure of the data dictionary terms. / Enumerations, templates, categories, terms, classes, structures, forms, collections and other term types.
- 6: Determine the rules and structure of the data dictionary descriptors. / Create schema for descriptors based on their data type.
- 7: Determine the base rules and behaviour of schema edge objects. / Design the schema and workflow for enumerations, controlled vocabulary templates, categories and choices, class and structure relationships, form and output reports.
- 8: Apply use cases to the model and refine the model. / Compile and test a set of queries in the database to test the model. / Refine the model and repeat until effective.
- 10: All low level operations. The selection should go from the detailed to the more high level, the idea is to break down every required operation into a detailed flowchart that will allow enumerating all the required data and functional elements that are required for the task. / yes / This activity should produce a list of atomic tasks that can be added to this plan / .
- 11: This activity should look at the result of “ / yes / Census of all required atomic operations” / and determine all necessary information items that are required to complete the task. Each of these items should translate into a descriptor, existing or new, that should be added to the structure spreadsheet which will be parsed and added to the database.
- 12: This activity takes the results of the “ / yes / Census of all required descriptors / ” activity, along with the results of the “ / yes / Census of all required atomic operations / ”, and uses them to compile the list of objects that are required to complete those tasks. This classes will be added to the “Symbols.numbers” file and later imported into the database.
- 13: This activity consists of noting whether atomic operations involve the use of new collections and assigning new classes to these collections.
- 15: Select, clean and compile list of standard data required for the project. / ISO 3166, ISO 639, ISO 4217, World Bank, Genoames, GEONet.
- 16: During the compilation of data standards, determine which descriptors are needed to handle the information and add to the descriptors spreadsheet the new ones and comment existing ones for usage in standards.
- 17: During the compilation of data standards
- 18: As new data standards classes are compiled, determine whether these should reside in collections other than / yes / TERMS / . For instance the / yes / Geonames / data should not be stored in / yes / TERMS / , except for eventual enumerations and structures.
- 19: Create a list of terms, descriptors and schema relationships that constitute the base of the data dictionary.
- 20: Load terms, descriptors and edges in database. / Develop scripts to automate and validate data dictionary elements.
- 21: Perform tests on data dictionary functions.
- 22: Add required elements depending on specific use cases.
- 23: Compile and test queries for traversing controlled vocabularies
- 24: Compile and test queries to traverse classes and structures.
- 25: Compile and test form structures and layouts.

| ID | WBS | Task | Predecessors | Complete | Constraint | Resources | Work | Actual work |
| --- | --- | --- | --- | --- | --- | --- | --- | --- |
| 26 | 11 | **Compile and integrate standard data** | 25 |  |  |  |  |  |
| 27 | 11.1 | Identify data standards |  | 100% | start no earlier than 2017-11-29 | Milko Skofic | 24h | 24h |
| 28 | 11.2 | Asses, and clean datasets | 27 | 100% | start no earlier than 2017-11-29 | Milko Skofic | 40h | 40h |
| 29 | 11.3 | Load ISO standards | 28 | 100% |  | Milko Skofic | 32h | 32h |
| 30 | 11.4 | Load geographical standards | 29 | 100% |  | Milko Skofic | 32h | 32h |
| 31 | 12 | Test and stress with standard data | 30 | 100% |  | Milko Skofic | 32h | 32h |
| 32 | 13 | Review data dictionary and standard data | 31 | 100% | start no earlier than 2018-01-08 | Milko Skofic | 24h | 24h |
| 33 | 14 | Compile components for user management | 32 | 100% |  | Milko Skofic | 24h | 24h |
| 34 | 15 | **Implement user management API** | 33 |  |  |  |  |  |
| 35 | 15.1 | Implement signup micro-services |  | 100% |  | Milko Skofic | 16h | 16h |
| 36 | 15.2 | Implement signin micro-services | 35 | 100% |  | Milko Skofic | 16h | 16h |
| 37 | 15.3 | Implement login micro-services | 36 | 100% |  | Milko Skofic | 8h | 8h |
| 38 | 15.4 | Implement logout micro-services | 37 | 100% |  | Milko Skofic | 8h | 8h |
| 39 | 15.5 | Implement current user sessions micro-services | 38 | 100% |  | Milko Skofic | 8h | 8h |
| 40 | 15.6 | Implement credentials management micro-services | 39 | 100% |  | Milko Skofic | 8h | 8h |
| 41 | 15.7 | Implement user group creation micro-service | 40 | 100% |  | Milko Skofic | 8h | 8h |
| 42 | 15.8 | Implement user listings micro services | 41 | 100% |  | Milko Skofic | 8h | 8h |
| 43 | 16 | Implement dynamic forms generation | 34 |  |  | Milko Skofic | 48h |  |
| 44 | 17 | Test dynamic forms generation | 43 |  |  | Milko Skofic | 24h |  |
| 45 | 18 | **Implement user management screen forms and procedures** | 44 |  |  |  |  |  |
| 46 | 18.1 | Implement signup |  |  |  | Milko Skofic | 12h |  |
| 47 | 18.2 | Implement signup e-mail communication | 46 |  |  | Milko Skofic | 8h |  |
| 48 | 18.3 | Implement signin | 47 |  |  | Milko Skofic | 8h |  |
| 49 | 18.4 | Clone signin for user data | 48 |  |  | Milko Skofic | 8h |  |
| 50 | 18.5 | Implement login | 49 |  |  | Milko Skofic | 2h |  |
| 51 | 18.6 | Implement logout | 50 |  |  | Milko Skofic | 1h |  |
| 52 | 19 | Analysis of data dictionary management | 51 | 100% | start no earlier than 2018-02-13 | Milko Skofic | 24h | 24h |

Notes:
- 26: Find clean and load standard data.
- 27: Identify and download data standards datasets.
- 28: Asses data quality. / Clean datasets. / Develop procedures to integrate data with existing data dictionary.
- 29: Compile and load ISO language, currency and country administrative units. / Develop scripts to automatically update standards.
- 30: Compile and load Geonames and GEOnet toponyms. / Develop scripts to automatically update standards.
- 31: Perform stress queries using standard data.
- 32: Review data dictionary and standards data dictionary. / Compile final symbols list. / Develop cleaning and uploading scripts. / Load in database for testing.
- 33: Determine structures and forms needed to implement user management. / Determine authentication strategy. / Distribute responsibility between database API services and web site API services.
- 34: Implement database micro-services for user management.
- 35: Implement micro-services for the creation of new users.
- 36: Implement micro-services for the registration of new users.
- 37: Implement micro-services for user login.
- 38: Implement micro-services for user logout process.
- 39: Implement micro-services to handle current user and current session.
- 40: Implement micro-services for managing user credentials according to current user rank and roles.
- 41: Implement micro-services for the creation of user groups.
- 42: Implement micro-services for listing users
- 43: Implement JSX procedures to dynamically generate screen forms according to form definitions in the data dictionary.
- 44: Test and refine dynamic forms generation. Add required additional data elements to the data dictionary.
- 45: Implement user management forms using dynamic form generation procedures. Implement management procedures.
- 46: Implement signup form.
- 47: Implement procedures to send user registration invitation via e-mail.
- 48: Implement e-mail response and signin form. / Implement signin procedure.
- 49: Clone and modify signin form for user profile management.
- 50: Implement login form and procedure.
- 51: Implement logout procedure.
- 52: Determine distinct components needed in database services and web-site services.

| ID | WBS | Task | Predecessors | Complete | Constraint | Resources | Work | Actual work |
| --- | --- | --- | --- | --- | --- | --- | --- | --- |
| 53 | 20 | **Implementation of data dictionary micro-services** | 52 |  | start no earlier than 2018-02-13 |  |  |  |
| 54 | 20.1 | Implement terms management |  |  | start no earlier than 2018-02-13 | Milko Skofic | 24h |  |
| 55 | 20.2 | Implement descriptors management | 54 |  | start no earlier than 2018-02-13 | Milko Skofic | 16h |  |
| 56 | 20.3 | Implement controlled vocabulary management | 55 | 100% | start no earlier than 2018-02-13 | Milko Skofic | 24h | 24h |
| 57 | 20.4 | Implement class and structures management | 56 |  | start no earlier than 2018-03-28 | Milko Skofic | 8h |  |
| 58 | 20.5 | Implement forms management | 57 |  | start no earlier than 2018-03-29 | Milko Skofic | 16h |  |
| 59 | 20.6 | Implement edges management | 58 |  | start no earlier than 2018-02-13 | Milko Skofic | 16h |  |
| 60 | 20.7 | Implement data dictionary queries | 59 | 100% | start no earlier than 2018-02-13 | Milko Skofic | 24h | 24h |
| 61 | 21 | **Implement data dictionary management user interface** | 60 |  |  |  |  |  |
| 62 | 21.1 | Implement terms interface |  |  |  | Milko Skofic | 16h |  |
| 63 | 21.2 | Implement descriptors interface | 62 |  |  | Milko Skofic | 8h |  |
| 64 | 21.3 | Implement controlled vocabulary interface | 63 |  | start no earlier than 2018-02-13 | Milko Skofic | 16h |  |
| 65 | 21.4 | Implement embedded forms | 64 |  | start no earlier than 2018-02-13 | Milko Skofic | 16h |  |
| 66 | 21.5 | Implement data dictionary queries | 65 |  | start no earlier than 2018-02-13 | Milko Skofic | 24h |  |
| 67 | 22 | Implement study registration micro-services | 66 |  |  | Milko Skofic | 16h |  |
| 68 | 23 | Implement study annex documents registration micro-services | 67 |  |  | Milko Skofic | 16h |  |
| 69 | 24 | Implement study annex upload forms | 68 |  |  | Milko Skofic | 8h |  |
| 70 | 25 | Implement dataset parsing procedures | 69 |  |  | Milko Skofic | 8h |  |
| 71 | 26 | Implement dataset parsing and registration micro-services | 70 |  |  | Milko Skofic | 16h |  |
| 72 | 27 | **Analyse dataset harmonisation workflow** | 71 |  |  |  |  |  |
| 73 | 27.1 | Perform analysis of dataset harmonisation workflow steps |  | 100% |  | Milko Skofic | 8h | 8h |
| 74 | 27.2 | Breakdown steps into individual user interface interactions | 73 | 100% |  | Milko Skofic | 8h | 8h |
| 75 | 27.3 | Breakdown steps into individual data micro-services | 74 | 100% |  | Milko Skofic | 8h | 8h |
| 76 | 28 | **Implement dataset harmonisation micro-services** | 75 |  |  |  |  |  |
| 77 | 28.1 | Implement original dataset request |  |  | start no earlier than 2018-04-04 | Milko Skofic | 6h |  |
| 78 | 28.2 | Implement original dataset header and data row selection | 77 |  | start no earlier than 2018-04-05 | Milko Skofic | 8h |  |
| 79 | 28.3 | Implement automatic descriptor matching | 78 |  |  | Milko Skofic | 8h |  |
| 80 | 28.4 | Implement descriptor assignment | 79 |  |  | Milko Skofic | 8h |  |

Notes:
- 53: Implement data dictionary data exchange micro-services.
- 54: Implement terms creation. / Implement terms queries. / Implement terms modifications.
- 55: Implement descriptors creation. / Implement descriptors queries. / Implement descriptors modification.
- 56: Implement controlled vocabulary management micro-services. / Implement controlled vocabulary structure modification.
- 57: Implement class and structures creation. / Implement class and structure modification.
- 58: Implement forms creation. / Implement forms modification. / Implement form types management (the different display options for data dictionary elements: list element, card, etc.).
- 59: Implement graph edge micro-services for relating terms and descriptors.
- 60: Implement micro-services for querying the data dictionary elements. / Terms, descriptors, controlled vocabularies, classes, structures and forms.
- 61: Implement user interface to manage data dictionary elements both as a dedicated task and as an embedded task in harmonisation activities.
- 62: Implement terms main input and modification forms.
- 63: Implement descriptors main input and modification forms.
- 64: Implement controlled vocabulary main forms.
- 65: Implement the forms needed to manage the data dictionary from within the harmonisation activities.
- 66: Implement main data dictionary query interface. / Terms, descriptors, controlled vocabularies. / Implement embedded query forms (from within data harmonisation activities).
- 67: Implement micro-services for study registration. / Implement data dictionary elements for linking studies to other components in the application. / Implement micro-services for the management of studies.
- 68: Implement micro-services for registration of study annex documents. / Implement micro-services for the management of annex documents.
- 69: Implement forms for uploading study annex documents. / Implement procedures for storing annex documents.
- 70: Implement procedures for parsing datasets into working collections. / Initially handle CSV files.
- 71: Implement micro-services for creating working dataset collections. / Implement dataset management micro-services.
- 72: This workflow applies to the process of displaying the dataset, selecting the data rows and assigning columns to existing data dictionary descriptors.
- 73: Compile a list of distinct actions and responses involved in the harmonisation process.
- 74: Convert workflow steps into individual user interface screens and interactions.
- 75: Compile list of required micro-services to manage the harmonisation process.
- 76: Implement the micro-services needed for all harmonisation steps.
- 77: Implement micro-services to request the original dataset full table.
- 78: Implement micro-services to record working data rows and header row.
- 79: Implement micro-service to return matched columns according to contents of header row.
- 80: Implement micro-service for assigning descriptors to columns.

| ID | WBS | Task | Predecessors | Constraint | Resources | Work |
| --- | --- | --- | --- | --- | --- | --- |
| 81 | 29 | **Implement dataset harmonisation user interface** | 80 |  |  |  |
| 82 | 29.1 | Implement original dataset table display |  |  | Milko Skofic | 8h |
| 83 | 29.2 | Implement header and data rows selection interface | 82 |  | Milko Skofic | 8h |
| 84 | 29.3 | Implement descriptor matching user interface | 83 |  | Milko Skofic | 8h |
| 85 | 29.4 | Implement manual descriptor selection | 84 |  | Milko Skofic | 8h |
| 86 | 29.5 | Implement descriptor assignement registration. | 85 |  | Milko Skofic | 8h |
| 87 | 30 | Compile list of data cleaning procedures | 86 |  | Milko Skofic | 8h |
| 88 | 31 | **Implement data cleaning micro-services** | 87 |  |  |  |
| 89 | 31.1 | Implement validation procedures |  |  | Milko Skofic | 8h |
| 90 | 31.2 | Implement categorical procedures | 89 |  | Milko Skofic | 8h |
| 91 | 31.3 | Implement categorical update procedures | 90 |  | Milko Skofic | 8h |
| 92 | 31.4 | Implement statistical data information | 91 |  | Milko Skofic | 8h |
| 93 | 31.5 | Implement data correction procedures | 92 |  | Milko Skofic | 8h |
| 94 | 32 | **Implement data cleaning interface** | 93 |  |  |  |
| 95 | 32.1 | Implement validation interface |  |  | Milko Skofic | 8h |
| 96 | 32.2 | Implement categorical validation interface | 95 |  | Milko Skofic | 8h |
| 97 | 32.3 | Implement categorical update interface | 96 |  | Milko Skofic | 8h |
| 98 | 32.4 | Implement statistical data information interface | 97 |  | Milko Skofic | 8h |
| 99 | 32.5 | Implement data correction interface | 98 |  | Milko Skofic | 8h |
| 100 | 33 | Implement dataset aggregation micro-services | 99 | start no earlier than 2018-02-13 | Milko Skofic | 8h |
| 101 | 34 | Implement dataset aggregation interface | 100 | start no earlier than 2018-02-13 | Milko Skofic | 8h |
| 102 | 35 | Implement data query micro-services | 101 | start no earlier than 2018-02-13 | Milko Skofic | 8h |
| 103 | 36 | Perform validation tests | 102 | start no earlier than 2018-02-22 | Milko Skofic | 24h |
| 104 | 37 | Build installation kit | 103 | start no earlier than 2018-02-22 | Milko Skofic | 16h |
| 105 | 38 | Feedback | 104 | start no earlier than 2018-02-22 | Milko Skofic | 80h |

Notes:
- 81: Implement user interface elements needed for dataset harmonisation.
- 82: Implement screen to display first N rows of original dataset.
- 83: Implement user interface elements to select header and data rows.
- 84: Implement interface to display and validate automatic descriptor matches.
- 85: Implement interface to browse and select descriptors to be assigned to selected columns.
- 87: Perform analysis of all required data cleaning procedures to be performed during and after harmonisation.
- 88: Implement micro-services needed for data cleaning procedures.
- 89: Implement micro-services for data validation. / This will exclusively check if the data matches the expected data types.
- 90: Implement micro-services to analyse and match categorical data. / This applies to categorical data such as controlled vocabularies, it involves matching existing data to the descriptor and returning mismatches.
- 91: Implement micro-services to update existing standards by adding controlled vocabulary elements. / Implement micro-services to update existing data by matching elements in the controlled vocabulary.
- 92: Implement micro-services to display statistical summaries for quantitative data.
- 93: Implement micro-services to correct dataset values. / This involves displaying incorrect data (from the validation procedure) and providing the option of correcting invalid entries, or clearing invalid entries.
- 94: Implement interface for data cleaning operations.
- 95: Implement interface to display validation errors.
- 96: Implement interface to display categorical data matching.
- 97: Implement interface to add controlled vocabulary elements. / Implement interface to update existing data by matching elements in the controlled vocabulary.
- 98: Implement interface to display statistical summaries for quantitative data.
- 99: Implement interface to correct dataset values.
- 100: Implement micro-services for aggregating datasets. / This involves adding the working collection to the aggregated datasets collection and removing the working collections and other related data.
- 101: Implement interface to aggregate dataset. / This mainly involves ascertaining the current user credentials and initiating the aggregation process.
- 102: Implement micro-services for querying data.
- 103: Apply use cases. / Apply non-standard use cases. / Revise and fix eventual anomalies.
- 104: Prepare installation kit. / Test installation. / Distribute to beta-testers.
- 105: Get feedback and implement suggestions. / Fix eventual bugs. / Build final documentation.
